# ReservaTuFuturo

Schedule from MS Project, 2024-10-02 to 2024-12-12, status date 2024-12-01, costs in €, A marks actual dates.

## Calendars

- Estándar: Mon-Fri 09:00-13:00, 15:00-19:00; Sat-Sun off.
- Calendario-Sevilla: Mon-Fri 09:00-13:00, 15:00-19:00; Sat-Sun off. Exceptions (off unless hours are given): 2024-11-01 (Festividad de todos los santos), 2024-12-06 (Festividad dia de la constitucion), 2024-12-09 (Festividad inmaculada concepcion).

## Resources

| Resource | Group | Rate |
| --- | --- | --- |
| PM | Equipo de direccion | 28 |
| Programador - 1 | Equipo de desarrollo | 13 |
| Programador - 2 | Equipo de desarrollo | 13 |
| DevOps - 1 | Equipo de desarrollo | 24 |
| DevOps - 2 | Equipo de desarrollo | 24 |
| Analista - 1 | Equipo de direccion | 19 |
| Analista - 2 | Equipo de direccion | 19 |
| Analista - 3 | Equipo de direccion | 19 |
| Analista - 4 | Equipo de direccion | 19 |
| Computador - 1 |  |  |
| Computador - 2 |  |  |
| Computador - 3 |  |  |
| Computador - 4 |  |  |
| Servicio de alojamiento Web |  |  |
| Reserva de Contingencia |  |  |
| Reserva de Gestión |  |  |

## Schedule

| ID | WBS | Task | Type | Duration | Start | Finish | Predecessors | Complete | Remaining | Actual finish | Baseline start | Baseline finish | Baseline duration | Baseline 1 start | Baseline 1 finish | Total slack | Resources | Work | Actual work | Cost | Baseline cost | Actual cost |
| --- | --- | --- | --- | --- | --- | --- | --- | --- | --- | --- | --- | --- | --- | --- | --- | --- | --- | --- | --- | --- | --- | --- |
| 1 | 1 | **Proyecto** |  | 51d | 2024-10-02 09:00 A | 2024-12-12 09:00 |  | 72% | 14.51d |  | 2024-10-02 09:00 | 2024-12-12 09:00 | 51d |  |  | 0d |  | 237h | 171h | 5,570.08 | 10,146.08 | 3,806.59 |
| 2 | 1.1 | **1. Inicio** |  | 16.38d | 2024-10-02 09:00 A | 2024-10-24 12:00 |  | 99% | 0d |  | 2024-10-02 09:00 | 2024-10-24 13:00 | 16.5d | 2024-10-02 09:00 | 2024-10-24 13:00 | 0d | Reserva de Contingencia [0.1%]; Reserva de Gestión [0.1%] | 7h | 7h | 153.93 | 134.93 | 153.93 |
| 3 | 1.1.1 | Inicio del Proyecto | milestone, manual | 0d | 2024-10-02 09:00 A | 2024-10-02 09:00 A |  | 100% |  |  | 2024-10-02 09:00 | 2024-10-02 09:00 | 0d | 2024-10-02 09:00 | 2024-10-02 09:00 |  |  |  |  |  |  |  |
| 4 | 1.1.2 | **1.1. Carpeta de Inicio** |  | 0.38d | 2024-10-24 09:00 A | 2024-10-24 12:00 A |  | 100% |  |  | 2024-10-24 09:00 | 2024-10-24 13:00 | 0.5d | 2024-10-24 09:00 | 2024-10-24 13:00 |  |  | 7h | 7h | 133 | 114 | 133 |
| 5 | 1.1.2.1 | Elaboración del Acta de Constitución |  | 3h | 2024-10-24 09:00 A | 2024-10-24 12:00 A |  | 100% |  |  | 2024-10-24 09:00 | 2024-10-24 13:00 | 2h | 2024-10-24 09:00 | 2024-10-24 13:00 |  | Analista - 1; Computador - 1 [75%] | 3h | 3h | 57 | 38 | 57 |
| 6 | 1.1.2.2 | Elaboración del Registro de Interesados | manual | 2h | 2024-10-24 09:00 A | 2024-10-24 11:00 A |  | 100% |  |  | 2024-10-24 09:00 | 2024-10-24 13:00 | 4h | 2024-10-24 09:00 | 2024-10-24 13:00 |  | Analista - 2; Computador - 2 [50%] | 2h | 2h | 38 | 38 | 38 |
| 7 | 1.1.2.3 | Elaboración del Registro de Supuestos | manual | 2h | 2024-10-24 09:00 A | 2024-10-24 11:00 A |  | 100% |  |  | 2024-10-24 09:00 | 2024-10-24 13:00 | 4h | 2024-10-24 09:00 | 2024-10-24 13:00 |  | Analista - 3; Computador - 3 [50%] | 2h | 2h | 38 | 38 | 38 |
| 8 | 1.2 | **2. Planificación** |  | 10.12d | 2024-10-24 09:00 A | 2024-11-07 10:00 A |  | 100% |  |  | 2024-10-24 09:00 | 2024-11-06 17:00 | 9.75d | 2024-10-24 09:00 | 2024-11-06 17:00 |  | Reserva de Contingencia [0.1%]; Reserva de Gestión [0.1%] | 90h | 90h | 1,877.44 | 1,972.44 | 1,877.44 |
| 9 | 1.2.1 | **2.1. Carpeta Planes** |  | 8d | 2024-10-24 09:00 A | 2024-11-04 19:00 |  | 100% |  | 2024-11-04 12:00 | 2024-10-24 09:00 | 2024-11-04 19:00 | 8d | 2024-10-24 09:00 | 2024-11-04 19:00 |  |  | 32h | 32h | 608 | 817 | 608 |
| 10 | 1.2.1.1 | Realización del Plan de Dirección del Proyecto | manual | 4h | 2024-10-24 15:00 A | 2024-10-24 19:00 A | 5, 6, 7 | 50% |  |  | 2024-10-24 15:00 | 2024-10-24 19:00 | 4h | 2024-10-24 15:00 | 2024-10-24 19:00 |  | Analista - 1; Computador - 1 [50%] | 2h | 2h | 38 | 38 | 38 |
| 11 | 1.2.1.2 | Elaboración del Plan de Gestión de Requisitos |  | 2h | 2024-10-24 09:00 A | 2024-10-25 10:00 A | 10 | 100% |  |  | 2024-10-24 09:00 | 2024-10-24 10:00 | 1h | 2024-10-24 09:00 | 2024-10-24 13:00 |  | Analista - 1; Computador - 1 | 2h | 2h | 38 | 19 | 38 |
| 12 | 1.2.1.3 | Elaboración del Plan de Gestión del Alcance |  | 4h | 2024-10-24 09:00 A | 2024-10-25 11:00 A | 10 | 100% |  |  | 2024-10-24 09:00 | 2024-10-25 11:00 | 4h | 2024-10-24 09:00 | 2024-10-24 13:00 |  | Analista - 2; Computador - 2 | 4h | 4h | 76 | 76 | 76 |
| 13 | 1.2.1.4 | Elaboración del Plan de Gestión del Cronograma |  | 2h | 2024-10-25 09:00 A | 2024-10-25 11:00 A | 10 | 100% |  |  | 2024-10-25 09:00 | 2024-10-25 13:00 | 4h | 2024-10-25 09:00 | 2024-10-25 13:00 |  | Analista - 2; Computador - 2 | 2h | 2h | 38 | 76 | 38 |
| 14 | 1.2.1.5 | Elaboración del Plan de Gestión de Costes | manual | 3h | 2024-10-25 09:00 A | 2024-10-25 12:00 A | 10 | 100% |  |  | 2024-10-25 09:00 | 2024-10-25 13:00 | 4h | 2024-10-25 09:00 | 2024-10-25 13:00 |  | Analista - 2; Computador - 2 | 3h | 3h | 57 | 76 | 57 |
| 15 | 1.2.1.6 | Elaboración del Plan de Gestión de Calidad |  | 1h | 2024-10-25 09:00 A | 2024-10-25 10:00 A | 10 | 100% |  |  | 2024-10-25 09:00 | 2024-10-25 13:00 | 4h | 2024-10-25 09:00 | 2024-10-25 13:00 |  | Analista - 3; Computador - 3 | 1h | 1h | 19 | 76 | 19 |
| 16 | 1.2.1.7 | Elaboración del Plan de Gestión de Recursos | manual | 5h | 2024-10-25 09:00 A | 2024-10-25 16:00 A | 10 | 100% |  |  | 2024-10-25 09:00 | 2024-10-25 13:00 | 4h | 2024-10-25 09:00 | 2024-10-25 13:00 |  | Analista - 3; Computador - 3 [200%] | 5h | 5h | 95 | 76 | 95 |
| 17 | 1.2.1.8 | Elaboración del Plan de Gestión de Comunicaciones | manual | 1h | 2024-11-04 09:00 A | 2024-11-04 10:00 A | 10 | 100% |  |  | 2024-11-04 09:00 | 2024-11-04 13:00 | 4h | 2024-11-04 09:00 | 2024-11-04 13:00 |  | Analista - 1; Computador - 1 | 1h | 1h | 19 | 76 | 19 |
| 18 | 1.2.1.9 | Elaboración del Plan de Gestión de Riesgos | manual | 2h | 2024-10-25 09:00 A | 2024-10-25 11:00 A | 10 | 100% |  |  | 2024-10-25 09:00 | 2024-10-25 13:00 | 4h | 2024-10-25 09:00 | 2024-10-25 13:00 |  | Analista - 4; Computador - 4 | 2h | 2h | 38 | 76 | 38 |
| 19 | 1.2.1.10 | Elaboración del Plan de Gestión de Adquisiciones | manual | 4h | 2024-10-25 09:00 A | 2024-10-25 13:00 A | 10 | 100% |  |  | 2024-10-25 09:00 | 2024-10-25 13:00 | 4h | 2024-10-25 09:00 | 2024-10-25 13:00 |  | Analista - 4; Computador - 4 | 4h | 4h | 76 | 76 | 76 |
| 20 | 1.2.1.11 | Elaboración del Plan de Gestión de Cambios | manual | 3h | 2024-10-25 09:00 A | 2024-10-25 12:00 A | 10 | 100% |  |  | 2024-10-25 09:00 | 2024-10-25 13:00 | 4h | 2024-10-25 09:00 | 2024-10-25 13:00 |  | Analista - 1; Computador - 1 | 3h | 3h | 57 | 76 | 57 |
| 21 | 1.2.1.12 | Elaboración del Plan de Gestión de la Configuración | manual | 3h | 2024-11-04 09:00 A | 2024-11-04 12:00 A | 10 | 100% |  |  | 2024-11-04 09:00 | 2024-11-04 13:00 | 4h | 2024-11-04 09:00 | 2024-11-04 13:00 |  | Analista - 2; Computador - 2 | 3h | 3h | 57 | 76 | 57 |
| 22 | 1.2.2 | **2.2. Carpeta Líneas Base** |  | 8.62d | 2024-10-25 15:00 A | 2024-11-07 10:00 A |  | 100% |  |  | 2024-10-25 15:00 | 2024-11-06 17:00 | 8.25d | 2024-10-25 15:00 | 2024-11-06 17:00 |  |  | 40h | 40h | 760 | 684 | 760 |
| 23 | 1.2.2.1 | Elaboración del Enunciado del Alcance | manual | 5h | 2024-10-25 15:00 A | 2024-10-28 10:00 A | 12 | 100% |  |  | 2024-10-25 15:00 | 2024-10-25 19:00 | 4h | 2024-10-25 15:00 | 2024-10-25 19:00 |  | Analista - 1; Computador - 1 [200%] | 5h | 5h | 95 | 76 | 95 |
| 24 | 1.2.2.2 | Elaboración de la EDT | manual | 6h | 2024-10-28 09:00 A | 2024-10-28 17:00 A | 23 | 100% |  |  | 2024-10-28 09:00 | 2024-10-28 17:00 | 6h | 2024-10-28 09:00 | 2024-10-28 17:00 |  | Analista - 2; Computador - 2 | 6h | 6h | 114 | 114 | 114 |
| 25 | 1.2.2.3 | Elaboración del Diccionario de la EDT |  | 13h | 2024-11-05 09:00 A | 2024-11-06 16:00 A | 23, 24, 31, 34 | 100% |  |  | 2024-11-05 09:00 | 2024-11-06 11:00 | 10h | 2024-11-05 09:00 | 2024-11-06 11:00 |  | Analista - 2; Computador - 2 [300%] | 13h | 13h | 247 | 190 | 247 |
| 26 | 1.2.2.4 | Elaboración de la Lista de Hitos | manual | 1h | 2024-10-28 09:00 A | 2024-10-28 10:00 A | 23 | 100% |  |  | 2024-10-28 09:00 | 2024-10-28 13:00 | 4h | 2024-10-28 09:00 | 2024-10-28 13:00 |  | Analista - 3; Computador - 3 | 1h | 1h | 19 | 76 | 19 |
| 27 | 1.2.2.5 | Entrenamiento para MS Project | manual | 4h | 2024-10-28 09:00 A | 2024-10-28 13:00 A |  | 100% |  |  | 2024-10-28 09:00 | 2024-10-28 13:00 | 4h | 2024-10-28 09:00 | 2024-10-28 13:00 |  | Analista - 4; Computador - 4 | 4h | 4h | 76 | 76 | 76 |
| 28 | 1.2.2.6 | Elaboración del Cronograma |  | 7h | 2024-11-06 11:00 A | 2024-11-07 10:00 A | 13, 24, 25, 31, 34 | 100% |  |  | 2024-11-06 11:00 | 2024-11-06 17:00 | 4h | 2024-11-06 11:00 | 2024-11-06 17:00 |  | Analista - 4; Computador - 4 [200%] | 7h | 7h | 133 | 76 | 133 |
| 29 | 1.2.2.7 | Elaboración del Presupuesto | manual | 4h | 2024-10-30 09:00 A | 2024-10-30 13:00 A | 16, 18, 19, 20, 14 | 100% |  |  | 2024-10-30 09:00 | 2024-10-30 13:00 | 4h | 2024-10-30 09:00 | 2024-10-30 13:00 |  | Analista - 3; Computador - 3 | 4h | 4h | 76 | 76 | 76 |

| ID | WBS | Task | Type | Duration | Start | Finish | Predecessors | Complete | Remaining | Actual finish | Baseline start | Baseline finish | Baseline duration | Baseline 1 start | Baseline 1 finish | Total slack | Constraint | Calendar | Resources | Work | Actual work | Cost | Baseline cost | Actual cost |
| --- | --- | --- | --- | --- | --- | --- | --- | --- | --- | --- | --- | --- | --- | --- | --- | --- | --- | --- | --- | --- | --- | --- | --- | --- |
| 30 | 1.2.3 | **2.3. Carpeta Trazabilidad** |  | 1.25d | 2024-11-04 09:00 A | 2024-11-05 11:00 A |  | 100% |  |  | 2024-11-04 09:00 | 2024-11-04 19:00 | 1d | 2024-11-04 09:00 | 2024-11-04 19:00 |  |  |  |  | 8h | 8h | 152 | 152 | 152 |
| 31 | 1.2.3.1 | Elaboración de la Matriz de Trazabilidad de Requisitos |  | 6h | 2024-11-04 15:00 A | 2024-11-05 11:00 A | 18, 34 | 100% |  |  | 2024-11-04 15:00 | 2024-11-04 19:00 | 4h | 2024-11-04 15:00 | 2024-11-04 19:00 |  |  |  | Analista - 1; Computador - 1 [200%] | 6h | 6h | 114 | 76 | 114 |
| 32 | 1.2.3.2 | Elaboración Matriz de Asignación de Responsabilidades |  | 2h | 2024-11-04 09:00 A | 2024-11-04 11:00 A |  | 100% |  |  | 2024-11-04 09:00 | 2024-11-04 13:00 | 4h | 2024-11-04 09:00 | 2024-11-04 13:00 |  | start no earlier than 2024-11-04 09:00 |  | Analista - 2; Computador - 2 | 2h | 2h | 38 | 76 | 38 |
| 33 | 1.2.4 | **2.4. Carpeta Registros** |  | 1d | 2024-11-04 09:00 A | 2024-11-04 19:00 A |  | 100% |  |  | 2024-11-04 09:00 | 2024-11-04 13:00 | 0.5d | 2024-11-04 09:00 | 2024-11-04 13:00 |  |  |  |  | 10h | 10h | 190 | 152 | 190 |
| 34 | 1.2.4.1 | Elaboración del Registro de Requisitos | manual | 8h | 2024-11-04 09:00 A | 2024-11-04 19:00 A | 11 | 100% |  |  | 2024-11-04 09:00 | 2024-11-04 13:00 | 4h | 2024-11-04 09:00 | 2024-11-04 13:00 |  |  |  | Analista - 3; Computador - 3 [271.4%] | 8h | 8h | 152 | 76 | 152 |
| 35 | 1.2.4.2 | Elaboración del Registro de Riesgos | manual | 2h | 2024-11-04 09:00 A | 2024-11-04 11:00 A | 18 | 100% |  |  | 2024-11-04 09:00 | 2024-11-04 13:00 | 4h | 2024-11-04 09:00 | 2024-11-04 13:00 |  |  |  | Analista - 4; Computador - 4 | 2h | 2h | 38 | 76 | 38 |
| 36 | 1.3 | Entrega Plan de Dirección de Proyecto | milestone | 0d | 2024-11-08 19:00 | 2024-11-08 19:00 | 2, 8 |  |  |  | 2024-11-08 19:00 | 2024-11-08 19:00 | 0d | 2024-11-08 19:00 | 2024-11-08 19:00 | 21d | finish no earlier than 2024-11-08 19:00 | Calendario-Sevilla |  |  |  |  |  |  |
| 37 | 1.4 | **Desarrollo** |  | 15.25d | 2024-11-11 09:00 A | 2024-12-02 11:00 |  | 97% | 0.47d |  | 2024-11-11 09:00 | 2024-12-02 13:00 | 15.5d | 2024-11-11 09:00 | 2024-12-02 13:00 | 0d |  |  | Reserva de Contingencia [0.1%]; Reserva de Gestión [0.1%] | 65h | 63h | 1,609.26 | 4,798.26 | 1,521.86 |
| 38 | 1.4.1 | Inicio Iteración 1 | milestone, manual | 0d | 2024-11-11 09:00 A | 2024-11-11 09:00 A |  | 100% |  |  | 2024-11-11 09:00 | 2024-11-11 09:00 | 0d | 2024-11-11 09:00 | 2024-11-11 09:00 |  |  |  |  |  |  |  |  |  |
| 39 | 1.4.2 | **3.1. Iteración 1** |  | 6d | 2024-11-11 09:00 A | 2024-11-18 19:00 |  | 100% |  | 2024-11-15 12:00 | 2024-11-11 09:00 | 2024-11-18 19:00 | 6d | 2024-11-11 09:00 | 2024-11-18 19:00 |  |  |  |  | 21h | 21h | 372 | 978 | 372 |
| 40 | 1.4.2.1 | **3.1.1. Adquisición de Recursos** |  | 1.5d | 2024-11-11 09:00 A | 2024-11-12 13:00 A |  | 100% |  |  | 2024-11-11 09:00 | 2024-11-12 17:00 | 1.75d | 2024-11-11 09:00 | 2024-11-12 17:00 |  |  |  |  | 11h | 11h | 242 | 484 | 242 |
| 41 | 1.4.2.1.1 | Preparación del entorno de desarrollo |  | 2h | 2024-11-11 09:00 A | 2024-11-11 11:00 A | 36 | 100% |  |  | 2024-11-11 09:00 | 2024-11-11 19:00 | 8h | 2024-11-11 09:00 | 2024-11-11 19:00 |  |  |  | DevOps - 1; Computador - 1 [25%] | 2h | 2h | 48 | 192 | 48 |
| 42 | 1.4.2.1.2 | Preparación de la BBDD |  | 3h | 2024-11-11 09:00 A | 2024-11-11 12:00 A | 36 | 100% |  |  | 2024-11-11 09:00 | 2024-11-11 13:00 | 4h | 2024-11-11 09:00 | 2024-11-11 13:00 |  |  |  | DevOps - 2; Computador - 2 | 3h | 3h | 72 | 96 | 72 |
| 43 | 1.4.2.1.3 | Entrenamiento con Django |  | 4h | 2024-11-12 09:00 A | 2024-11-12 13:00 A |  | 100% |  |  | 2024-11-12 09:00 | 2024-11-12 17:00 | 6h | 2024-11-12 09:00 | 2024-11-12 17:00 |  | start no earlier than 2024-11-12 09:00 |  | DevOps - 1; Computador - 1 [66.7%] | 4h | 4h | 96 | 144 | 96 |
| 44 | 1.4.2.1.4 | Configuración PaaS y CI/CD |  | 2h | 2024-11-11 09:00 A | 2024-11-11 11:00 A | 36 | 100% |  |  | 2024-11-11 09:00 | 2024-11-11 13:00 | 4h | 2024-11-11 09:00 | 2024-11-11 13:00 |  |  |  | Programador - 1; Computador - 3 | 2h | 2h | 26 | 52 | 26 |
| 45 | 1.4.2.2 | **3.1.2. Gestión de Usuarios** |  | 2.62d | 2024-11-12 17:00 A | 2024-11-15 12:00 A |  | 100% |  |  | 2024-11-12 17:00 | 2024-11-15 13:00 | 2.75d | 2024-11-12 17:00 | 2024-11-15 13:00 |  |  |  |  | 10h | 10h | 130 | 494 | 130 |
| 46 | 1.4.2.2.1 | Registro de usuario (R5, R19) |  | 4h | 2024-11-12 17:00 A | 2024-11-13 11:00 A | 41, 42, 43, 44 | 100% |  |  | 2024-11-12 17:00 | 2024-11-14 17:00 | 16h | 2024-11-12 17:00 | 2024-11-14 17:00 |  |  |  | Programador - 1; Computador - 3 | 4h | 4h | 52 | 208 | 52 |
| 47 | 1.4.2.2.2 | Inicio de sesión (R7) |  | 2h | 2024-11-12 17:00 A | 2024-11-12 19:00 A | 41, 42, 43, 44 | 100% |  |  | 2024-11-12 17:00 | 2024-11-13 17:00 | 8h | 2024-11-12 17:00 | 2024-11-13 17:00 |  |  |  | Programador - 2; Computador - 4 | 2h | 2h | 26 | 104 | 26 |
| 48 | 1.4.2.2.3 | Edición de usuario (R6, R19) |  | 1h | 2024-11-14 09:00 A | 2024-11-14 10:00 A | 41, 42, 43, 44 | 100% |  |  | 2024-11-14 09:00 | 2024-11-15 11:00 | 10h | 2024-11-14 09:00 | 2024-11-15 11:00 |  | start no earlier than 2024-11-14 09:00 |  | Programador - 2; Computador - 4 | 1h | 1h | 13 | 130 | 13 |
| 49 | 1.4.2.2.4 | Vista de los datos de la academia (R29) |  | 3h | 2024-11-15 09:00 A | 2024-11-15 12:00 A | 41, 42, 43, 44 | 100% |  |  | 2024-11-15 09:00 | 2024-11-15 13:00 | 4h | 2024-11-15 09:00 | 2024-11-15 13:00 |  | start no earlier than 2024-11-15 09:00 |  | Programador - 1; Computador - 3 [200%] | 3h | 3h | 39 | 52 | 39 |
| 50 | 1.4.2.2.5 | Inicio Iteración 2 | milestone, manual | 0d | 2024-11-15 09:00 A | 2024-11-15 09:00 A |  | 100% |  |  | 2024-11-15 09:00 | 2024-11-15 09:00 | 0d | 2024-11-15 09:00 | 2024-11-15 09:00 |  |  |  |  |  |  |  |  |  |
| 51 | 1.4.3 | **3.2. Iteración 2** |  | 4.12d | 2024-11-19 09:00 A | 2024-11-25 10:00 | 39 | 93% | 0.29d |  | 2024-11-19 09:00 | 2024-11-25 19:00 | 5d | 2024-11-19 09:00 | 2024-11-25 19:00 | 5.12d |  |  |  | 28h | 26h | 518 | 2,208 | 470 |
| 52 | 1.4.3.1 | **3.2.1. Gestión de Cursos** |  | 2.38d | 2024-11-19 09:00 A | 2024-11-21 12:00 | 39 | 87% | 0.32d |  | 2024-11-19 09:00 | 2024-11-21 17:00 | 2.75d | 2024-11-19 09:00 | 2024-11-21 17:00 | 6.88d |  |  |  | 15h | 13h | 272 | 1,128 | 224 |
| 53 | 1.4.3.1.1 | Registrar nuevo curso(R20) |  | 3h | 2024-11-19 09:00 A | 2024-11-19 12:00 A | 39 | 100% |  |  | 2024-11-19 09:00 | 2024-11-20 19:00 | 16h | 2024-11-19 09:00 | 2024-11-20 19:00 |  |  |  | DevOps - 1; Computador - 1 [25%] | 3h | 3h | 72 | 384 | 72 |
| 54 | 1.4.3.1.2 | Modificación del curso(R28) |  | 1h | 2024-11-19 09:00 A | 2024-11-19 10:00 A | 39 | 100% |  |  | 2024-11-19 09:00 | 2024-11-20 13:00 | 12h | 2024-11-19 09:00 | 2024-11-20 13:00 |  |  |  | DevOps - 2; Computador - 2 | 1h | 1h | 24 | 288 | 24 |
| 55 | 1.4.3.1.3 | Listado de cursos ofertados (R1, R10, R11, R26) |  | 4h | 2024-11-19 09:00 A | 2024-11-19 13:00 A | 39 | 100% |  |  | 2024-11-19 09:00 | 2024-11-20 13:00 | 12h | 2024-11-19 09:00 | 2024-11-20 13:00 |  |  |  | Programador - 1; Computador - 3 [125%] | 4h | 4h | 52 | 156 | 52 |
| 56 | 1.4.3.1.4 | Ver detalles de un curso (R13, R27, R38) |  | 4h | 2024-11-19 09:00 A | 2024-11-19 13:00 A | 39 | 100% |  |  | 2024-11-19 09:00 | 2024-11-20 13:00 | 12h | 2024-11-19 09:00 | 2024-11-20 13:00 |  |  |  | Programador - 2; Computador - 4 [266.7%] | 4h | 4h | 52 | 156 | 52 |
| 57 | 1.4.3.1.5 | Listado de cursos reservados (R25) |  | 3h | 2024-11-21 09:00 A | 2024-11-21 12:00 |  | 33% | 2h |  | 2024-11-21 09:00 | 2024-11-21 17:00 | 6h | 2024-11-21 09:00 | 2024-11-21 17:00 | 6.88d | start no earlier than 2024-11-21 09:00 |  | DevOps - 1; Computador - 1 [200%] | 3h | 1h | 72 | 144 | 24 |

| ID | WBS | Task | Type | Duration | Start | Finish | Predecessors | Complete | Remaining | Actual start | Actual finish | Baseline start | Baseline finish | Baseline duration | Baseline 1 start | Baseline 1 finish | Total slack | Free slack | Constraint | Resources | Work | Actual work | Cost | Baseline cost | Actual cost |
| --- | --- | --- | --- | --- | --- | --- | --- | --- | --- | --- | --- | --- | --- | --- | --- | --- | --- | --- | --- | --- | --- | --- | --- | --- | --- |
| 58 | 1.4.3.2 | **3.2.2. Gestión de Reservas** |  | 2d | 2024-11-21 10:00 A | 2024-11-25 10:00 A |  | 100% |  |  |  | 2024-11-21 17:00 | 2024-11-25 19:00 | 2.25d | 2024-11-21 17:00 | 2024-11-25 19:00 |  |  |  |  | 13h | 13h | 246 | 1,080 | 246 |
| 59 | 1.4.3.2.1 | Reserva de un curso (R14) |  | 4h | 2024-11-21 17:00 A | 2024-11-22 11:00 A | 52 | 100% |  |  |  | 2024-11-21 17:00 | 2024-11-25 17:00 | 16h | 2024-11-21 17:00 | 2024-11-25 17:00 |  |  |  | DevOps - 1; Computador - 1 | 4h | 4h | 96 | 384 | 96 |
| 60 | 1.4.3.2.2 | Implementación de pago (R15, R31, R34, R35) |  | 3h | 2024-11-21 17:00 A | 2024-11-22 10:00 A | 52 | 100% |  |  |  | 2024-11-21 17:00 | 2024-11-25 17:00 | 16h | 2024-11-21 17:00 | 2024-11-25 17:00 |  |  |  | DevOps - 2; Computador - 2 [200%] | 3h | 3h | 72 | 384 | 72 |
| 61 | 1.4.3.2.3 | Lista de clientes del curso (R39) |  | 2h | 2024-11-21 10:00 A | 2024-11-21 13:00 A | 52 | 100% |  |  |  | 2024-11-21 17:00 | 2024-11-22 17:00 | 8h | 2024-11-21 17:00 | 2024-11-22 17:00 |  |  |  | Programador - 1; Computador - 3 [200%] | 2h | 2h | 26 | 104 | 26 |
| 62 | 1.4.3.2.4 | Implementación de la lista de cursos reservados por el cliente (R30) |  | 3h | 2024-11-21 10:00 A | 2024-11-21 13:00 A | 52 | 100% |  |  |  | 2024-11-21 17:00 | 2024-11-22 17:00 | 8h | 2024-11-21 17:00 | 2024-11-22 17:00 |  |  |  | Programador - 2; Computador - 4 [200%] | 3h | 3h | 39 | 104 | 39 |
| 63 | 1.4.3.2.5 | Implementación del carrito de compra para cursos (R33) |  | 1h | 2024-11-25 09:00 A | 2024-11-25 10:00 A |  | 100% |  |  |  | 2024-11-25 09:00 | 2024-11-25 19:00 | 8h | 2024-11-25 09:00 | 2024-11-25 19:00 |  |  | start no earlier than 2024-11-25 09:00 | Programador - 1; Computador - 3 | 1h | 1h | 13 | 104 | 13 |
| 64 | 1.4.3.2.6 | Inicio Iteración 3 | milestone, manual | 0d | 2024-11-21 10:00 A | 2024-11-21 10:00 A |  | 100% |  |  |  | 2024-11-21 17:00 | 2024-11-21 17:00 | 0d | 2024-11-21 17:00 | 2024-11-21 17:00 |  |  |  |  |  |  |  |  |  |
| 65 | 1.4.4 | **3.3. Iteración 3** |  | 6d | 2024-11-25 09:00 | 2024-12-01 19:00 | 51 | 100% |  | 2024-11-25 10:00 | 2024-11-27 11:00 | 2024-11-25 09:00 | 2024-12-01 19:00 | 6d | 2024-11-25 09:00 | 2024-12-01 19:00 |  |  |  |  | 10h | 10h | 185 | 888 | 185 |
| 66 | 1.4.4.1 | **3.3.1. Desarrollo de Pruebas** |  | 1.12d | 2024-11-25 10:00 A | 2024-11-26 11:00 A |  | 100% |  |  |  | 2024-11-26 09:00 | 2024-11-26 19:00 | 1d | 2024-11-26 09:00 | 2024-11-26 19:00 |  |  |  |  | 4h | 4h | 85 | 488 | 85 |
| 67 | 1.4.4.1.1 | Pruebas de usuario |  | 1h | 2024-11-26 09:00 A | 2024-11-26 10:00 A |  | 100% |  |  |  | 2024-11-26 09:00 | 2024-11-26 19:00 | 8h | 2024-11-26 09:00 | 2024-11-26 19:00 |  |  | start no earlier than 2024-11-26 09:00 | DevOps - 1; Computador - 1; Servicio de alojamiento Web | 1h | 1h | 24 | 192 | 24 |
| 68 | 1.4.4.1.2 | Pruebas de curso |  | 2h | 2024-11-26 09:00 A | 2024-11-26 11:00 A |  | 100% |  |  |  | 2024-11-26 09:00 | 2024-11-26 19:00 | 8h | 2024-11-26 09:00 | 2024-11-26 19:00 |  |  | start no earlier than 2024-11-26 09:00 | DevOps - 2; Computador - 2 [200%]; Servicio de alojamiento Web [200%] | 2h | 2h | 48 | 192 | 48 |
| 69 | 1.4.4.1.3 | Pruebas de reserva |  | 1h | 2024-11-25 10:00 A | 2024-11-25 11:00 A | 58 | 100% |  |  |  | 2024-11-26 09:00 | 2024-11-26 19:00 | 8h | 2024-11-26 09:00 | 2024-11-26 19:00 |  |  |  | Programador - 2; Computador - 4; Servicio de alojamiento Web | 1h | 1h | 13 | 104 | 13 |
| 70 | 1.4.4.2 | **3.3.2. Gestión de Notificaciones** |  | 2.12d | 2024-11-25 10:00 A | 2024-11-27 11:00 A |  | 100% |  |  |  | 2024-11-26 09:00 | 2024-11-27 19:00 | 2d | 2024-11-26 09:00 | 2024-11-27 19:00 |  |  |  |  | 6h | 6h | 100 | 400 | 100 |
| 71 | 1.4.4.2.1 | Notificación del curso adquirido (R16) |  | 2h | 2024-11-25 10:00 A | 2024-11-25 12:00 A | 51 | 100% |  |  |  | 2024-11-26 09:00 | 2024-11-26 19:00 | 8h | 2024-11-26 09:00 | 2024-11-26 19:00 |  |  |  | Programador - 1; Computador - 3 [200%]; Servicio de alojamiento Web [200%] | 2h | 2h | 26 | 104 | 26 |
| 72 | 1.4.4.2.2 | Notificación de revocación del acceso al curso (R36) |  | 2h | 2024-11-27 09:00 A | 2024-11-27 11:00 A |  | 100% |  |  |  | 2024-11-27 09:00 | 2024-11-27 19:00 | 8h | 2024-11-27 09:00 | 2024-11-27 19:00 |  |  | start no earlier than 2024-11-27 09:00 | Programador - 2; Computador - 4; Servicio de alojamiento Web | 2h | 2h | 26 | 104 | 26 |
| 73 | 1.4.4.2.3 | Notificación de revocación del acceso al sitio web (R37) |  | 2h | 2024-11-27 09:00 A | 2024-11-27 11:00 A |  | 100% |  |  |  | 2024-11-27 09:00 | 2024-11-27 19:00 | 8h | 2024-11-27 09:00 | 2024-11-27 19:00 |  |  | start no earlier than 2024-11-27 09:00 | DevOps - 2; Computador - 2; Servicio de alojamiento Web | 2h | 2h | 48 | 192 | 48 |
| 74 | 1.4.5 | **3.4. Carpeta Ejecución** |  | 0.25d | 2024-12-02 09:00 A | 2024-12-02 11:00 A |  | 100% |  |  |  | 2024-12-02 09:00 | 2024-12-02 13:00 | 0.5d | 2024-12-02 09:00 | 2024-12-02 13:00 |  |  |  |  | 6h | 6h | 114 | 304 | 114 |
| 75 | 1.4.5.1 | Elaboración de registro de cambios |  | 2h | 2024-12-02 09:00 A | 2024-12-02 11:00 A | 36, 65 | 100% |  |  |  | 2024-12-02 09:00 | 2024-12-02 13:00 | 4h | 2024-12-02 09:00 | 2024-12-02 13:00 |  |  | finish no earlier than 2024-12-01 19:00 | Analista - 1; Computador - 1 | 2h | 2h | 38 | 76 | 38 |
| 76 | 1.4.5.2 | Elaboración de registro de incidencias |  | 1h | 2024-12-02 09:00 A | 2024-12-02 10:00 A | 36, 65 | 100% |  |  |  | 2024-12-02 09:00 | 2024-12-02 13:00 | 4h | 2024-12-02 09:00 | 2024-12-02 13:00 |  |  | finish no earlier than 2024-12-01 19:00 | Analista - 2; Computador - 2 | 1h | 1h | 19 | 76 | 19 |
| 77 | 1.4.5.3 | Elaboración de registro de decisiones |  | 1h | 2024-12-02 09:00 A | 2024-12-02 10:00 A | 36, 65 | 100% |  |  |  | 2024-12-02 09:00 | 2024-12-02 13:00 | 4h | 2024-12-02 09:00 | 2024-12-02 13:00 |  |  | finish no earlier than 2024-12-01 19:00 | Analista - 3; Computador - 3 | 1h | 1h | 19 | 76 | 19 |
| 78 | 1.4.5.4 | Elaboración de documentación de los sprints |  | 2h | 2024-12-02 09:00 A | 2024-12-02 11:00 A | 36, 65 | 100% |  |  |  | 2024-12-02 09:00 | 2024-12-02 13:00 | 4h | 2024-12-02 09:00 | 2024-12-02 13:00 |  |  | finish no earlier than 2024-12-01 19:00 | Analista - 4; Computador - 4 | 2h | 2h | 38 | 76 | 38 |
| 79 | 1.5 | **4. Seguimiento y Control** |  | 3.75d | 2024-12-02 11:00 A | 2024-12-05 19:00 | 37 | 19% | 3.05d |  |  | 2024-12-02 15:00 | 2024-12-05 19:00 | 3.5d | 2024-12-02 15:00 | 2024-12-05 19:00 | 3d | 2d |  | Reserva de Contingencia [0.1%]; Reserva de Gestión [0.1%] | 59h | 11h | 1,518.94 | 2,829.94 | 253.36 |
| 80 | 1.5.1 | **4.1. Monitoreo del Progreso del Proyecto** |  | 0.5d | 2024-12-02 11:00 A | 2024-12-02 17:00 A | 37 | 100% |  |  |  | 2024-12-02 15:00 | 2024-12-04 19:00 | 2.5d | 2024-12-02 15:00 | 2024-12-04 19:00 |  |  |  |  | 11h | 11h | 209 | 1,520 | 209 |
| 81 | 1.5.1.1 | Recolección de datos |  | 4h | 2024-12-02 11:00 A | 2024-12-02 17:00 A | 37 | 100% |  |  |  | 2024-12-02 15:00 | 2024-12-04 19:00 | 20h | 2024-12-02 15:00 | 2024-12-04 19:00 |  |  |  | Analista - 1; Computador - 1 | 4h | 4h | 76 | 380 | 76 |
| 82 | 1.5.1.2 | Elaboración de informes de desempeño |  | 2h | 2024-12-02 11:00 A | 2024-12-02 13:00 A | 37 | 100% |  |  |  | 2024-12-02 15:00 | 2024-12-04 19:00 | 20h | 2024-12-02 15:00 | 2024-12-04 19:00 |  |  |  | Analista - 2; Computador - 2 | 2h | 2h | 38 | 380 | 38 |
| 83 | 1.5.1.3 | Análisis de desviaciones |  | 3h | 2024-12-02 11:00 A | 2024-12-02 16:00 A | 37 | 100% |  |  |  | 2024-12-02 15:00 | 2024-12-04 19:00 | 20h | 2024-12-02 15:00 | 2024-12-04 19:00 |  |  |  | Analista - 3; Computador - 3 | 3h | 3h | 57 | 380 | 57 |
| 84 | 1.5.1.4 | Elaboración de informes de seguimiento |  | 2h | 2024-12-02 11:00 A | 2024-12-02 13:00 A | 37 | 100% |  |  |  | 2024-12-02 15:00 | 2024-12-04 19:00 | 20h | 2024-12-02 15:00 | 2024-12-04 19:00 |  |  |  | Analista - 4; Computador - 4 | 2h | 2h | 38 | 380 | 38 |

| ID | WBS | Task | Type | Duration | Start | Finish | Predecessors | Baseline start | Baseline finish | Baseline duration | Baseline 1 start | Baseline 1 finish | Total slack | Free slack | Constraint | Resources | Work | Cost | Baseline cost |
| --- | --- | --- | --- | --- | --- | --- | --- | --- | --- | --- | --- | --- | --- | --- | --- | --- | --- | --- | --- |
| 85 | 1.5.2 | **4.2. Control de Cambios y Gestión de la Calidad** |  | 2.75d | 2024-12-02 11:00 | 2024-12-04 19:00 | 37 | 2024-12-02 15:00 | 2024-12-04 19:00 | 2.5d | 2024-12-02 15:00 | 2024-12-04 19:00 | 1.75d |  |  |  | 32h | 768 | 768 |
| 86 | 1.5.2.1 | Actualización del plan de dirección |  | 8h | 2024-12-02 11:00 | 2024-12-03 11:00 | 37 | 2024-12-02 15:00 | 2024-12-03 13:00 | 8h | 2024-12-02 15:00 | 2024-12-03 13:00 | 5.75d |  |  | DevOps - 1; Computador - 1 | 8h | 192 | 192 |
| 87 | 1.5.2.2 | Actualización de la documentación del proyecto |  | 8h | 2024-12-02 11:00 | 2024-12-03 11:00 | 37 | 2024-12-02 15:00 | 2024-12-03 13:00 | 8h | 2024-12-02 15:00 | 2024-12-03 13:00 | 5.75d |  |  | DevOps - 2; Computador - 2 | 8h | 192 | 192 |
| 88 | 1.5.2.3 | Verificación de entregables | manual | 8h | 2024-12-04 09:00 | 2024-12-04 19:00 | 37 | 2024-12-04 09:00 | 2024-12-04 19:00 | 8h | 2024-12-04 09:00 | 2024-12-04 19:00 |  |  |  | DevOps - 1; Computador - 1 | 8h | 192 | 192 |
| 89 | 1.5.2.4 | Implementación de cambios | manual | 8h | 2024-12-04 09:00 | 2024-12-04 19:00 | 37 | 2024-12-04 09:00 | 2024-12-04 19:00 | 8h | 2024-12-04 09:00 | 2024-12-04 19:00 |  |  |  | DevOps - 2; Computador - 2 | 8h | 192 | 192 |
| 90 | 1.5.3 | **4.3. Reportes de Estado y Gestión de Riesgos** |  | 1d | 2024-12-05 09:00 | 2024-12-05 19:00 | 37 | 2024-12-05 09:00 | 2024-12-05 19:00 | 1d | 2024-12-05 09:00 | 2024-12-05 19:00 | 0d |  |  |  | 16h | 304 | 304 |
| 91 | 1.5.3.1 | Monitorización de los riesgos identificados | manual | 8h | 2024-12-05 09:00 | 2024-12-05 19:00 | 37 | 2024-12-05 09:00 | 2024-12-05 19:00 | 8h | 2024-12-05 09:00 | 2024-12-05 19:00 |  |  |  | Analista - 1; Computador - 1 | 8h | 152 | 152 |
| 92 | 1.5.3.2 | Elaboración de informes de estado | manual | 8h | 2024-12-05 09:00 | 2024-12-05 19:00 | 37 | 2024-12-05 09:00 | 2024-12-05 19:00 | 8h | 2024-12-05 09:00 | 2024-12-05 19:00 |  |  |  | Analista - 2; Computador - 2 | 8h | 152 | 152 |
| 93 | 1.5.3.3 | Aplicación completamente testeada | milestone, manual | 0d | 2024-12-05 09:00 | 2024-12-05 09:00 |  | 2024-12-05 09:00 | 2024-12-05 09:00 | 0d | 2024-12-05 09:00 | 2024-12-05 09:00 |  |  |  |  |  |  |  |
| 94 | 1.5.3.4 | Validación de la calidad | milestone, manual | 0d | 2024-12-05 09:00 | 2024-12-05 09:00 |  | 2024-12-05 09:00 | 2024-12-05 09:00 | 0d | 2024-12-05 09:00 | 2024-12-05 09:00 |  |  |  |  |  |  |  |
| 95 | 1.6 | **5. Cierre** |  | 2d | 2024-12-10 09:00 | 2024-12-12 09:00 | 79 | 2024-12-10 09:00 | 2024-12-12 09:00 | 2d | 2024-12-10 09:00 | 2024-12-12 09:00 | 0d |  |  | Reserva de Contingencia [0.1%]; Reserva de Gestión [0.1%] | 16h | 410.51 | 410.51 |
| 96 | 1.6.1 | **5.1. Entrega del Proyecto** |  | 1d | 2024-12-10 09:00 | 2024-12-10 19:00 |  | 2024-12-10 09:00 | 2024-12-10 19:00 | 1d |  |  | 1d |  |  |  | 12h | 264 | 264 |
| 97 | 1.6.1.1 | Presentación del Proyecto |  | 4h | 2024-12-10 09:00 | 2024-12-10 13:00 | 37, 79 | 2024-12-10 09:00 | 2024-12-10 13:00 | 4h | 2024-12-10 09:00 | 2024-12-10 13:00 | 1.5d |  |  | PM; Computador - 1 | 4h | 112 | 112 |
| 98 | 1.6.1.2 | Elaboración del Manual de Instrucciones |  | 8h | 2024-12-10 09:00 | 2024-12-10 19:00 | 37, 79 | 2024-12-10 09:00 | 2024-12-10 19:00 | 8h | 2024-12-10 09:00 | 2024-12-10 19:00 | 1d | 0d |  | Analista - 3; Computador - 3 | 8h | 152 | 152 |
| 99 | 1.6.2 | **5.2. Cierre del Proyecto** |  | 0.5d | 2024-12-10 09:00 | 2024-12-10 13:00 |  | 2024-12-10 09:00 | 2024-12-10 13:00 | 0.5d |  |  | 1.5d |  |  |  | 4h | 112 | 112 |
| 100 | 1.6.2.1 | Elaboración de Informe de Cierre |  | 4h | 2024-12-10 09:00 | 2024-12-10 13:00 | 37, 79 | 2024-12-10 09:00 | 2024-12-10 13:00 | 4h | 2024-12-10 09:00 | 2024-12-10 13:00 | 1.5d | 0.5d | start no earlier than 2024-12-10 09:00 | PM; Computador - 1 | 4h | 112 | 112 |
| 101 | 1.6.3 | Entrega del Proyecto | milestone | 0d | 2024-12-10 19:00 | 2024-12-10 19:00 | 98, 100 | 2024-12-10 19:00 | 2024-12-10 19:00 | 0d | 2024-12-10 19:00 | 2024-12-10 19:00 | 1d |  |  |  |  |  |  |
| 102 | 1.6.4 | Presentación | milestone, manual | 0d | 2024-12-12 09:00 | 2024-12-12 09:00 | 97, 98, 100 | 2024-12-12 09:00 | 2024-12-12 09:00 | 0d | 2024-12-12 09:00 | 2024-12-12 09:00 |  |  |  |  |  |  |  |
